Schedule from MS Project, 2011-03-15 to 2012-07-04, status date 2011-05-03, A marks actual dates.
Microsoft

## Calendars

- Estándar: Mon-Fri 09:00-13:00, 15:00-19:00; Sat-Sun off.

## Resources

| Resource |
| --- |
| Belén Bazán |
| Pablo Nicoliello |
| Martín Herrán |
| Laura Pastorino |
| Belén Bazán - Martin Herran |
| Equipo |

## Schedule

| ID | WBS | Task | Type | Duration | Start | Finish | Complete | Remaining | Actual finish | Resources | Work | Actual work |
| --- | --- | --- | --- | --- | --- | --- | --- | --- | --- | --- | --- | --- |
| 1 | 1 | **Informe Preliminar** |  | 34.88d | 2011-03-15 A | 2011-05-02 A | 100% |  |  |  |  |  |
| 2 | 1.1 | Definición del sistema a realizar | manual | 3d | 2011-03-15 A | 2011-03-17 A | 100% |  |  |  |  |  |
| 3 | 1.2 | Entrevista Institución | manual | 2d | 2011-03-15 A | 2011-03-16 A | 100% |  |  |  |  |  |
| 4 | 1.3 | Recopilación de Información | manual | 16d | 2011-03-17 A | 2011-04-07 A | 100% |  |  |  |  |  |
| 5 | 1.4 | Confección de Informe Preliminar | manual | 20d | 2011-03-21 A | 2011-04-15 A | 100% |  |  |  |  |  |
| 6 | 1.5 | Entrevista Institución | manual | 1d | 2011-04-18 A | 2011-04-18 A | 100% |  |  |  |  |  |
| 7 | 1.6 | Correcciones Informe Preliminar | manual | 10.88d | 2011-04-12 A | 2011-04-26 A | 100% |  |  |  |  |  |
| 8 | 1.7 | Planificación | manual | 5.88d | 2011-04-25 A | 2011-05-02 A | 100% |  |  |  |  |  |
| 9 | 2 | **Sprint 1** |  | 25d | 2011-05-02 A | 2011-06-03 | 95% | 1.36d |  |  | 639h | 608.6h |
| 10 | 2.1 | Identificar Roles y Perfiles | manual | 1d | 2011-05-02 A | 2011-05-02 A | 100% |  |  | Belén Bazán; Pablo Nicoliello | 16h | 16h |
| 11 | 2.2 | Realizar matriz de trazabilidad requierimientos - casos de uso | manual | 4d | 2011-05-02 A | 2011-05-05 A | 100% |  |  | Martín Herrán | 32h | 32h |
| 12 | 2.3 | Realizar y priorizar product Backlog | manual | 2d | 2011-05-02 A | 2011-05-03 A | 100% |  |  | Martín Herrán | 16h | 16h |
| 13 | 2.4 | Realizar diagrama de Caso de uso - Listado de Casos de Uso | manual | 7d | 2011-05-15 A | 2011-05-23 A | 100% |  |  | Belén Bazán; Pablo Nicoliello | 112h | 112h |
| 14 | 2.5 | Derivar user stories de Casos de Uso | manual | 5d | 2011-05-02 A | 2011-05-06 A | 100% |  |  | Martín Herrán | 40h | 40h |
| 15 | 2.6 | Realizar Diagrama de Clases | manual | 2d | 2011-05-02 A | 2011-05-03 A | 100% |  |  | Pablo Nicoliello | 16h | 16h |
| 16 | 2.7 | Crear estructura de Datos | manual | 5d | 2011-05-02 A | 2011-05-06 | 99% | 0.05d |  | Laura Pastorino | 40h | 39.6h |
| 17 | 2.8 | Modulo de Importacion de Datos | manual | 15d | 2011-05-15 A | 2011-06-02 | 75% | 3.75d |  | Laura Pastorino | 120h | 90h |
| 18 | 2.9 | Preparacion de Primera Exposicion | manual | 6.88d | 2011-05-02 A | 2011-05-10 A | 100% |  |  | Equipo | 55h | 55h |
| 19 | 2.10 | **Plan de Actividades de Soporte** |  | 15d | 2011-05-10 A | 2011-05-30 | 100% |  | 2011-05-28 |  | 144h | 144h |
| 20 | 2.10.1 | Plan de Gestion de Riesgo | manual | 3d | 2011-05-10 A | 2011-05-12 A | 100% |  |  | Pablo Nicoliello | 24h | 24h |
| 21 | 2.10.2 | Plan de Capacitacion | manual | 3d | 2011-05-10 A | 2011-05-12 A | 100% |  |  | Laura Pastorino | 24h | 24h |
| 22 | 2.10.3 | Plan de Calidad | manual | 3d | 2011-05-10 A | 2011-05-12 A | 100% |  |  | Belén Bazán | 24h | 24h |
| 23 | 2.10.4 | Plan del Proyecto | manual | 3d | 2011-05-10 A | 2011-05-12 A | 100% |  |  | Martín Herrán | 24h | 24h |
| 24 | 2.10.5 | Plan de Metricas | manual | 2d | 2011-05-10 A | 2011-05-11 A | 100% |  |  | Martín Herrán | 16h | 16h |
| 25 | 2.10.6 | Instructivo de Seteo de entorno | manual | 1d | 2011-05-28 A | 2011-05-28 A | 100% |  |  | Laura Pastorino | 8h | 8h |
| 26 | 2.10.7 | Plan de Gestion de Configuracion | manual | 3d | 2011-05-10 A | 2011-05-12 A | 100% |  |  | Pablo Nicoliello | 24h | 24h |
| 27 | 2.11 | Gestion y Configuracion del Proyecto | manual | 2d | 2011-05-02 A | 2011-05-03 A | 100% |  |  | Martín Herrán | 16h | 16h |
| 28 | 2.12 | Revision Formal de entregables | manual | 1d | 2011-05-29 A | 2011-05-29 A | 100% |  |  | Martín Herrán; Belén Bazán; Laura Pastorino; Pablo Nicoliello | 32h | 32h |
| 29 | 2.13 | Correcciones informe preliminar | manual | 1d | 2011-05-29 A | 2011-05-29 A | 100% |  |  | Pablo Nicoliello |  |  |

| ID | WBS | Task | Type | Duration | Start | Finish | Complete | Remaining |
| --- | --- | --- | --- | --- | --- | --- | --- | --- |
| 30 | 3 | **Sprint 2** |  | 25d | 2011-06-04 A | 2011-07-07 | 19% | 20.3d |
| 31 | 3.1 | Modulo de Gestion de Informacion de Alumnos | manual | 22d | 2011-06-04 | 2011-07-04 |  |  |
| 32 | 3.2 | Modulo web | manual | 5d | 2011-06-04 A | 2011-06-09 | 20% | 4d |
| 33 | 3.3 | Modulo de Gestión de Usuarios y Perfiles | manual | 9d | 2011-06-04 A | 2011-06-15 | 30% | 6.3d |
| 34 | 3.4 | Preparacion de Segunda Exposicion | manual | 3d | 2011-06-17 A | 2011-06-21 A | 100% |  |
| 35 | 3.5 | Gestion y Configuracion del Proyecto | manual | 2d | 2011-06-04 A | 2011-06-06 | 50% | 1d |
| 36 | 4 | **Sprint 3** |  | 25d | 2011-07-08 | 2011-08-11 |  |  |
| 37 | 4.1 | Modulo Gestion de Agenda de Actividades | manual | 10d | 2011-07-08 | 2011-07-21 |  |  |
| 38 | 4.2 | Modulo de Novedades Aulicas | manual | 10d | 2011-07-08 | 2011-07-21 |  |  |
| 39 | 4.3 | Modulo de Reportes | manual | 8d | 2011-07-08 | 2011-07-19 |  |  |
| 40 | 4.4 | Gestion y Configuracion del Proyecto | manual | 2d | 2011-07-08 | 2011-07-11 |  |  |
| 41 | 5 | **Sprint 4** |  | 25d | 2011-08-12 | 2011-09-15 |  |  |
| 42 | 5.1 | Modulo de Gestion de Comunicación | manual | 15d | 2011-08-12 | 2011-09-01 |  |  |
| 43 | 5.2 | Modulo de Gestion de Planificacion - Parte 1 | manual | 15d | 2011-08-12 | 2011-09-01 |  |  |
| 44 | 5.3 | Gestion y Configuracion del Proyecto | manual | 2d | 2011-08-12 | 2011-08-15 |  |  |
| 45 | 6 | **Sprint 5** |  | 30d | 2011-09-16 | 2011-10-27 |  |  |
| 46 | 6.1 | Tareas de Cierre del Proyecto | manual | 7d | 2011-09-16 | 2011-09-26 |  |  |
| 47 | 6.2 | Manual de Proceso | manual | 5d | 2011-09-16 | 2011-09-22 |  |  |
| 48 | 6.3 | Manual de Usuarios | manual | 5d | 2011-09-16 | 2011-09-22 |  |  |
| 49 | 6.4 | Modulo de Gestion de Planificacion - Parte 2 | manual | 30d | 2011-09-16 | 2011-10-27 |  |  |
| 50 | 6.5 | Gestion y Configuracion del Proyecto | manual | 2d | 2011-09-16 | 2011-09-19 |  |  |
| 51 | 7 | Regularización | manual | 1d | 2011-10-28 | 2011-10-28 |  |  |
| 53 | 8 | **Sprint 6** |  | 30d | 2012-03-01 | 2012-04-11 |  |  |
| 54 | 8.1 | Modulo de Encuesta | manual | 30d | 2012-03-01 | 2012-04-11 |  |  |
| 55 | 8.2 | Gestion y Configuracion del Proyecto | manual | 2d | 2012-03-01 | 2012-03-02 |  |  |

| ID | WBS | Task | Type | Duration | Start | Finish |
| --- | --- | --- | --- | --- | --- | --- |
| 56 | 9 | **Sprint 7** |  | 30d | 2012-04-12 | 2012-05-23 |
| 57 | 9.1 | Modulo de Foro | manual | 15d | 2012-04-12 | 2012-05-02 |
| 58 | 9.2 | Gestion y Configuracion del Proyecto | manual | 2d | 2012-04-12 | 2012-04-13 |
| 59 | 10 | **Sprint 8** |  | 30d | 2012-05-24 | 2012-07-04 |
| 60 | 10.1 | Bug Fixing | manual | 20d | 2012-05-24 | 2012-06-20 |
| 61 | 10.2 | Pruebas de Aceptacion | manual | 20d | 2012-05-24 | 2012-06-20 |
